Schedule from MS Project, 2020-09-19 to 2021-02-26, A marks actual dates.

## Calendars

- 标准: Mon-Fri 08:00-12:00, 13:00-17:00; Sat-Sun off. Exceptions (off unless hours are given): 2020-09-19 08:00-12:00, 13:00-17:00 (加班).

## Resources

| Resource |
| --- |
| liu |
| li |
| zhang |
| zhao |
| sui |
| du |
| PM |
| QA\PM |
| PM\DEV |
| CM |
| PPQA |
| PM\DEV\QA\CM\GM\ |
| PM\DEV\QA\CM\Test\GM |
| market |
| ma需求开发人员 |
| 需求开发人员 |
| 需求开发人员/技术人员 |
| 需求开发人员技术人员 |
| 技术人员 |
| PM\DEV\QA\CM\Test\GM\需求开发人员 |
| 开发人员 |
| 设计人员 |
| 编码人员 |
| 评审人员 |
| 需求人员 |
| Tester |
| QA |
| 项目所有人员 |
| 客户 |
| 客服 |
| 客服\客户 |
| 相关人员 |
| 高层经理 |
| 项目成员 |
| 李亮 |
| 李亮\傅淑娟\邵华 |
| 项目组成员 |
| 配置管理员 |
| 朱炳锋 |
| 邵华 |
| 武凌峰 |
| 张锡锋 |
| z张锡锋 |
| 武陵峰 |
| DEV |
| Test |
| GM |
| 韶华 |
| PM/GM |
| PM/DEV |
| PM/QA |
| PM/DEV/Tester |

## Schedule

| ID | WBS | Task | Type | Duration | Start | Finish | Predecessors | Complete | Constraint | Resources | Work | Actual work | Text1 |
| --- | --- | --- | --- | --- | --- | --- | --- | --- | --- | --- | --- | --- | --- |
| 1 | 1 | **YIL** |  | 116d | 2020-09-19 08:00 A | 2021-02-26 17:00 A |  | 100% |  |  | 1352h | 1352h |  |
| 2 | 1.1 | **项目启动** |  | 6d | 2020-09-19 08:00 A | 2020-09-25 17:00 A |  | 100% |  |  | 48h | 48h |  |
| 3 | 1.1.1 | 建立项目 |  | 1d | 2020-09-19 08:00 A | 2020-09-19 17:00 A |  | 100% | start no earlier than 2020-09-19 08:00 | PM/GM | 8h | 8h |  |
| 4 | 1.1.2 | 确认项目利益相关人、项目资源及关键的依赖关系 |  | 1d | 2020-09-21 08:00 A | 2020-09-21 17:00 A | 3 | 100% | finish no earlier than 2019-08-14 17:00 | PM | 8h | 8h |  |
| 5 | 1.1.3 | 对项目进行可行性分析 |  | 2d | 2020-09-22 08:00 A | 2020-09-23 17:00 A | 4 | 100% | finish no earlier than 2019-08-16 17:00 | PM/DEV | 16h | 16h |  |
| 6 | 1.1.4 | 对项目进行初始估算 |  | 1d | 2020-09-24 08:00 A | 2020-09-24 17:00 A | 5 | 100% | finish no earlier than 2019-08-20 17:00 | PM/DEV | 8h | 8h |  |
| 7 | 1.1.5 | 准备项目任务书 |  | 0.5d | 2020-09-25 08:00 A | 2020-09-25 12:00 A | 6 | 100% | start no earlier than 2019-08-21 08:00 | PM | 4h | 4h |  |
| 8 | 1.1.6 | 召开项目启动会 |  | 0.5d | 2020-09-25 13:00 A | 2020-09-25 17:00 A | 7 | 100% | start no earlier than 2019-08-21 08:00 | PM\DEV\QA\CM\Test\GM\需求开发人员 | 4h | 4h |  |
| 9 | 1.2 | **项目计划** |  | 13d | 2020-09-28 08:00 A | 2020-10-14 17:00 A |  | 100% |  |  | 68h | 68h |  |
| 10 | 1.2.1 | 过程裁剪 |  | 0.5d | 2020-09-28 08:00 A | 2020-09-28 12:00 A | 8 | 100% |  | PM/QA | 4h | 4h |  |
| 11 | 1.2.2 | 进行工作任务结构分解 |  | 0.5d | 2020-09-28 13:00 A | 2020-09-28 17:00 A | 10 | 100% |  | PM | 4h | 4h |  |
| 12 | 1.2.3 | 进行详细估算 |  | 1d | 2020-09-29 08:00 A | 2020-09-29 17:00 A | 11 | 100% |  | PM/DEV | 8h | 8h |  |
| 13 | 1.2.4 | 建立项目进度计划 |  | 1d | 2020-09-30 08:00 A | 2020-09-30 17:00 A | 12 | 100% | finish no earlier than 2019-08-28 17:00 | PM/DEV | 8h | 8h |  |
| 14 | 1.2.5 | 建立沟通计划 |  | 0.5d | 2020-10-08 08:00 A | 2020-10-08 12:00 A | 13 | 100% | start no earlier than 2020-10-08 08:00 | PM | 4h | 4h |  |
| 15 | 1.2.6 | 建立培训计划 |  | 0.5d | 2020-10-08 13:00 A | 2020-10-08 17:00 A | 14 | 100% | start no earlier than 2019-08-28 08:00 | PM | 4h | 4h |  |
| 16 | 1.2.7 | 建立移交计划 |  | 0.5d | 2020-10-09 08:00 A | 2020-10-09 12:00 A | 15 | 100% |  |  |  |  |  |
| 17 | 1.2.8 | 建立资源计划 |  | 0.5d | 2020-10-09 13:00 A | 2020-10-09 17:00 A | 16 | 100% | finish no earlier than 2019-08-29 17:00 | PM | 4h | 4h |  |
| 18 | 1.2.9 | 建立项目风险管理计划 |  | 0.5d | 2020-10-12 08:00 A | 2020-10-12 12:00 A | 17 | 100% | start no earlier than 2019-08-29 08:00 | PM/DEV | 4h | 4h |  |
| 19 | 1.2.10 | 建立配置管理计划 |  | 0.5d | 2020-10-12 13:00 A | 2020-10-12 17:00 A | 18 | 100% | finish no earlier than 2019-09-02 17:00 | CM | 4h | 4h |  |
| 20 | 1.2.11 | 建立质量保证计划 |  | 1d | 2020-10-13 08:00 A | 2020-10-13 17:00 A | 19 | 100% | start no earlier than 2019-08-30 08:00 | PPQA | 8h | 8h |  |
| 21 | 1.2.12 | 建立度量与分析计划 |  | 0.5d | 2020-10-14 08:00 A | 2020-10-14 12:00 A | 20 | 100% | start no earlier than 2019-09-02 08:00 |  |  |  |  |
| 22 | 1.2.13 | 项目计划评审 |  | 0.5d | 2020-10-14 13:00 A | 2020-10-14 17:00 A | 21 | 100% | finish no earlier than 2019-09-04 17:00 | 项目组成员; 高层经理; 配置管理员; PPQA | 16h | 16h | 会议走查 |
| 23 | 1.3 | **需求开发与管理** |  | 14d | 2020-10-15 08:00 A | 2020-11-03 17:00 A |  | 100% |  |  | 132h | 132h |  |
| 24 | 1.3.1 | 客户调研 |  | 3d | 2020-10-15 08:00 A | 2020-10-19 17:00 A | 22 | 100% | finish no earlier than 2019-09-06 17:00 | 需求开发人员; 客户 | 36h | 36h |  |
| 25 | 1.3.2 | 与客户进行初步沟通 |  | 2d | 2020-10-20 08:00 A | 2020-10-21 17:00 A | 24 | 100% | finish no earlier than 2019-09-09 17:00 | 需求开发人员; 客户 | 20h | 20h |  |
| 26 | 1.3.3 | 建立初步描述 |  | 2d | 2020-10-22 08:00 A | 2020-10-23 17:00 A | 25 | 100% | finish no earlier than 2019-09-06 17:00 | 需求开发人员 | 16h | 16h |  |
| 27 | 1.3.4 | 与客户确定产品描述并进一步获取需求 |  | 1d | 2020-10-23 17:00 A | 2020-10-26 17:00 A | 26 | 100% | finish no earlier than 2019-11-01 17:00 | 需求开发人员; 客户 | 8h | 8h |  |
| 28 | 1.3.5 | 编写产品规格需求 |  | 2d | 2020-10-27 08:00 A | 2020-10-28 17:00 A | 27 | 100% | finish no earlier than 2019-09-11 17:00 | 需求开发人员 | 16h | 16h |  |
| 29 | 1.3.6 | 准备需求评审检查单 |  | 0.5d | 2020-10-29 08:00 A | 2020-10-29 17:00 A | 28 | 100% | start no earlier than 2019-09-12 08:00 | 需求开发人员 | 4h | 4h |  |
| 30 | 1.3.7 | 需求技术评审 |  | 0.5d | 2020-10-29 17:00 A | 2020-10-30 12:00 A | 29 | 100% | finish no earlier than 2020-03-24 17:00 | 需求开发人员; 客户 | 4h | 4h |  |
| 31 | 1.3.8 | 建立需求跟踪矩阵 |  | 0.5d | 2020-10-30 13:00 A | 2020-11-02 12:00 A | 30 | 100% | start no earlier than 2019-09-13 08:00 | 需求开发人员 | 4h | 4h |  |
| 32 | 1.3.9 | 产品需求规格说明书基线化 |  | 0.5d | 2020-11-02 13:00 A | 2020-11-02 17:00 A | 31 | 100% | start no earlier than 2020-05-13 08:00 | CM | 4h | 4h |  |
| 33 | 1.3.10 | 需求里程碑评审 | milestone | 0.5d | 2020-11-03 08:00 A | 2020-11-03 17:00 A | 32 | 100% | finish no earlier than 2020-08-18 17:00 | 高层经理; 项目成员; QA; CM; 客户 | 20h | 20h |  |

| ID | WBS | Task | Type | Duration | Start | Finish | Predecessors | Complete | Constraint | Resources | Work | Actual work | Text1 |
| --- | --- | --- | --- | --- | --- | --- | --- | --- | --- | --- | --- | --- | --- |
| 34 | 1.4 | **分析与设计** |  | 8.5d | 2020-11-04 08:00 A | 2020-11-16 12:00 A |  | 100% |  |  | 76h | 76h |  |
| 35 | 1.4.1 | 开发选择设计方案 |  | 2d | 2020-11-04 08:00 A | 2020-11-05 17:00 A | 33 | 100% |  | PM/DEV | 16h | 16h |  |
| 36 | 1.4.2 | 系统设计 |  | 3d | 2020-11-06 08:00 A | 2020-11-10 17:00 A | 35 | 100% |  | DEV | 24h | 24h |  |
| 37 | 1.4.3 | 准备设计评审检查单 |  | 0.5d | 2020-11-11 08:00 A | 2020-11-11 12:00 A | 36 | 100% |  | DEV | 4h | 4h |  |
| 38 | 1.4.4 | 设计评审 |  | 0.5d | 2020-11-11 13:00 A | 2020-11-11 17:00 A | 37 | 100% |  | DEV | 4h | 4h | 评审方式：正式的同行评审 |
| 39 | 1.4.5 | 设计基线化 |  | 0.5d | 2020-11-12 08:00 A | 2020-11-12 17:00 A | 38 | 100% |  | CM | 4h | 4h |  |
| 40 | 1.4.6 | 建立设计到需求的跟踪矩阵 |  | 0.5d | 2020-11-13 08:00 A | 2020-11-13 12:00 A | 39 | 100% |  | DEV | 4h | 4h |  |
| 41 | 1.4.7 | 设计里程碑评审 | milestone | 0.5d | 2020-11-13 13:00 A | 2020-11-16 12:00 A | 40 | 100% | finish no earlier than 2020-08-28 17:00 | 高层经理; 项目成员; QA; CM; 客户 | 20h | 20h |  |
| 42 | 1.5 | **编码** |  | 49d | 2020-11-16 13:00 A | 2021-01-22 12:00 A |  | 100% |  |  | 392h | 392h |  |
| 43 | 1.5.1 | 确定编码规范 |  | 0.5d | 2020-11-16 13:00 A | 2020-11-16 17:00 A | 41 | 100% |  | PM | 4h | 4h |  |
| 44 | 1.5.2 | 准备代码评审检查单 |  | 0.5d | 2020-11-17 08:00 A | 2020-11-17 12:00 A | 43 | 100% |  | PM | 4h | 4h |  |
| 45 | 1.5.3 | **注册登录** |  | 8d | 2020-11-17 13:00 A | 2020-11-27 12:00 A |  | 100% |  |  | 64h | 64h |  |
| 46 | 1.5.3.1 | 编程 |  | 6d | 2020-11-17 13:00 A | 2020-11-25 12:00 A | 44 | 100% | start no earlier than 2003-09-29 08:00 | DEV | 48h | 48h |  |
| 47 | 1.5.3.2 | 进行代码走查 |  | 1d | 2020-11-25 13:00 A | 2020-11-26 12:00 A | 46 | 100% |  | DEV | 8h | 8h | 走查 |
| 48 | 1.5.3.3 | 进行模块测试 |  | 1d | 2020-11-26 13:00 A | 2020-11-27 12:00 A | 47 | 100% |  | DEV | 8h | 8h |  |
| 49 | 1.5.4 | **贷款申请** |  | 8d | 2020-11-27 13:00 A | 2020-12-09 12:00 A |  | 100% |  |  | 64h | 64h |  |
| 50 | 1.5.4.1 | 编程 |  | 6d | 2020-11-27 13:00 A | 2020-12-07 12:00 A | 48 | 100% |  | DEV | 48h | 48h |  |
| 51 | 1.5.4.2 | 进行代码走查 |  | 1d | 2020-12-07 13:00 A | 2020-12-08 12:00 A | 50 | 100% |  | DEV | 8h | 8h | 走查 |
| 52 | 1.5.4.3 | 进行模块测试 |  | 1d | 2020-12-08 13:00 A | 2020-12-09 12:00 A | 51 | 100% |  | DEV | 8h | 8h |  |
| 53 | 1.5.5 | **合同签订** |  | 8d | 2020-12-09 13:00 A | 2020-12-21 12:00 A |  | 100% |  |  | 64h | 64h |  |
| 54 | 1.5.5.1 | 编程 |  | 6d | 2020-12-09 13:00 A | 2020-12-17 12:00 A | 44, 52 | 100% | start no earlier than 2019-10-15 08:00 | DEV | 48h | 48h |  |
| 55 | 1.5.5.2 | 进行代码走查 |  | 1d | 2020-12-17 13:00 A | 2020-12-18 12:00 A | 54 | 100% |  | DEV | 8h | 8h | 走查 |
| 56 | 1.5.5.3 | 进行模块测试 |  | 1d | 2020-12-18 13:00 A | 2020-12-21 12:00 A | 55 | 100% |  | DEV | 8h | 8h |  |
| 57 | 1.5.6 | **我要用款** |  | 8d | 2020-12-21 13:00 A | 2020-12-31 12:00 A |  | 100% |  |  | 64h | 64h |  |
| 58 | 1.5.6.1 | 编程 |  | 6d | 2020-12-21 13:00 A | 2020-12-29 12:00 A | 44, 56 | 100% |  | DEV | 48h | 48h |  |
| 59 | 1.5.6.2 | 进行代码走查 |  | 1d | 2020-12-29 13:00 A | 2020-12-30 12:00 A | 58 | 100% |  | DEV | 8h | 8h | 走查 |
| 60 | 1.5.6.3 | 进行模块测试 |  | 1d | 2020-12-30 13:00 A | 2020-12-31 12:00 A | 59 | 100% |  | DEV | 8h | 8h |  |

| ID | WBS | Task | Duration | Start | Finish | Predecessors | Complete | Constraint | Resources | Work | Actual work |
| --- | --- | --- | --- | --- | --- | --- | --- | --- | --- | --- | --- |
| 61 | 1.5.7 | **贷款还款** | 8d | 2020-12-31 13:00 A | 2021-01-12 12:00 A |  | 100% |  |  | 64h | 64h |
| 62 | 1.5.7.1 | 编程 | 6d | 2020-12-31 13:00 A | 2021-01-08 12:00 A | 60 | 100% | start no earlier than 2020-02-05 08:00 | DEV | 48h | 48h |
| 63 | 1.5.7.2 | 进行代码走查 | 1d | 2021-01-08 13:00 A | 2021-01-11 12:00 A | 62 | 100% | start no earlier than 2020-02-10 08:00 | DEV | 8h | 8h |
| 64 | 1.5.7.3 | 进行模块测试 | 1d | 2021-01-11 13:00 A | 2021-01-12 12:00 A | 63 | 100% | start no earlier than 2020-02-11 08:00 | DEV | 8h | 8h |
| 65 | 1.5.8 | **白名单管理** | 8d | 2021-01-12 13:00 A | 2021-01-22 12:00 A |  | 100% |  |  | 64h | 64h |
| 66 | 1.5.8.1 | 编程 | 6d | 2021-01-12 13:00 A | 2021-01-20 12:00 A | 64 | 100% | start no earlier than 2020-10-12 08:00 | DEV | 48h | 48h |
| 67 | 1.5.8.2 | 进行代码走查 | 1d | 2021-01-20 13:00 A | 2021-01-21 12:00 A | 66 | 100% | start no earlier than 2020-10-19 08:00 | DEV | 8h | 8h |
| 68 | 1.5.8.3 | 进行模块测试 | 1d | 2021-01-21 13:00 A | 2021-01-22 12:00 A | 67 | 100% | start no earlier than 2020-10-20 08:00 | DEV | 8h | 8h |
| 69 | 1.6 | **产品集成** | 6d | 2020-12-31 13:00 A | 2021-01-08 12:00 A |  | 100% |  |  | 44h | 44h |
| 70 | 1.6.1 | 确定将被集成的组件与接口 | 1d | 2020-12-31 13:00 A | 2021-01-01 12:00 A | 60 | 100% |  | DEV | 8h | 8h |
| 71 | 1.6.2 | 确定集成顺序 | 0.5d | 2021-01-01 13:00 A | 2021-01-01 17:00 A | 70 | 100% |  | DEV | 4h | 4h |
| 72 | 1.6.3 | 确定集成环境的需求 | 0.5d | 2021-01-04 08:00 A | 2021-01-04 12:00 A | 71 | 100% |  | DEV | 4h | 4h |
| 73 | 1.6.4 | 建立和维护集成规程 | 0.5d | 2021-01-04 13:00 A | 2021-01-04 17:00 A | 72 | 100% |  | DEV | 4h | 4h |
| 74 | 1.6.5 | 确保集成环境准备好 | 0.5d | 2021-01-05 08:00 A | 2021-01-05 17:00 A | 73 | 100% | finish no earlier than 2019-11-04 17:00 | DEV | 4h | 4h |
| 75 | 1.6.6 | 确保组件环境准备好 | 0.5d | 2021-01-06 08:00 A | 2021-01-06 12:00 A | 74 | 100% |  | DEV | 4h | 4h |
| 76 | 1.6.7 | 执行组件的集成 | 1d | 2021-01-06 13:00 A | 2021-01-07 12:00 A | 75 | 100% | start no earlier than 2020-11-04 08:00 | DEV | 8h | 8h |
| 77 | 1.6.8 | 集成编译并解决集成中的问题/缺陷 | 0.5d | 2021-01-07 13:00 A | 2021-01-07 17:00 A | 76 | 100% | start no earlier than 2019-11-07 08:00 | DEV | 4h | 4h |
| 78 | 1.6.9 | 提交系统测试 | 0.5d | 2021-01-08 08:00 A | 2021-01-08 12:00 A | 77 | 100% | start no earlier than 2019-11-07 08:00 | DEV | 4h | 4h |
| 79 | 1.7 | **系统测试** | 13d | 2021-01-01 13:00 A | 2021-01-20 12:00 A |  | 100% |  |  | 112h | 112h |
| 80 | 1.7.1 | 准备测试计划、测试用例 | 3d | 2021-01-01 13:00 A | 2021-01-06 12:00 A | 70 | 100% | start no earlier than 2019-11-04 08:00 | Tester | 24h | 24h |
| 81 | 1.7.2 | 组织评审 | 0.5d | 2021-01-06 13:00 A | 2021-01-06 17:00 A | 80 | 100% |  | Tester | 4h | 4h |
| 82 | 1.7.3 | 建立测试用例到需求的跟踪矩阵 | 0.5d | 2021-01-07 08:00 A | 2021-01-07 12:00 A | 81 | 100% |  | Tester | 4h | 4h |
| 83 | 1.7.4 | 执行测试并记录BUG | 2d | 2021-01-07 13:00 A | 2021-01-11 12:00 A | 82 | 100% |  | Tester | 16h | 16h |
| 84 | 1.7.5 | BUG管理流程 | 2d | 2021-01-11 13:00 A | 2021-01-13 12:00 A | 83 | 100% |  | Tester | 16h | 16h |
| 85 | 1.7.6 | 测试总结 | 0.5d | 2021-01-13 13:00 A | 2021-01-13 17:00 A | 84 | 100% |  | Tester | 4h | 4h |
| 86 | 1.7.7 | 测试结果评审 | 0.5d | 2021-01-14 08:00 A | 2021-01-14 12:00 A | 85 | 100% |  | 高层经理; 项目成员; QA; CM | 16h | 16h |
| 87 | 1.7.8 | 测试里程碑评审 | 0.5d | 2021-01-14 13:00 A | 2021-01-14 17:00 A | 86 | 100% | start no earlier than 2019-11-13 08:00 |  |  |  |
| 88 | 1.7.9 | 编写用户操作手册 | 3d | 2021-01-15 08:00 A | 2021-01-19 17:00 A | 87 | 100% | start no earlier than 2019-11-14 08:00 | DEV | 24h | 24h |
| 89 | 1.7.10 | 评审用户手册 | 0.5d | 2021-01-20 08:00 A | 2021-01-20 12:00 A | 88 | 100% |  | PM/DEV/Tester | 4h | 4h |

| ID | WBS | Task | Duration | Start | Finish | Predecessors | Complete | Constraint | Resources | Work | Actual work |
| --- | --- | --- | --- | --- | --- | --- | --- | --- | --- | --- | --- |
| 90 | 1.8 | **产品发布** | 22.5d | 2021-01-20 13:00 A | 2021-02-19 17:00 A |  | 100% |  |  | 408h | 408h |
| 91 | 1.8.1 | 确定发布内容 | 0.5d | 2021-01-20 13:00 A | 2021-01-20 17:00 A | 89 | 100% |  | PM | 4h | 4h |
| 92 | 1.8.2 | 发布评审 | 0.5d | 2021-01-21 08:00 A | 2021-01-22 09:36 A | 91 | 100% | finish no earlier than 2020-11-16 17:00 | 评审人员 | 4h | 4h |
| 93 | 1.8.3 | 进行发布审计 | 0.5d | 2021-01-22 09:36 A | 2021-01-22 14:36 A | 92 | 100% | finish no earlier than 2019-11-18 17:00 | QA | 4h | 4h |
| 94 | 1.8.4 | 建立发布基线 | 0.5d | 2021-01-22 14:36 A | 2021-01-25 12:00 A | 93 | 100% | start no earlier than 2019-11-18 08:00 | CM | 4h | 4h |
| 95 | 1.8.5 | 制作软件安装包 | 1d | 2021-01-25 13:00 A | 2021-01-26 14:36 A | 94 | 100% | finish no earlier than 2020-11-18 17:00 | PM | 8h | 8h |
| 96 | 1.8.6 | 进行安装包的投产测试 | 2d | 2021-01-26 14:36 A | 2021-01-28 14:36 A | 95 | 100% | start no earlier than 2019-11-20 08:00 | Tester | 16h | 16h |
| 97 | 1.8.7 | 进行发布 | 1d | 2021-01-28 14:36 A | 2021-01-29 16:12 A | 96 | 100% | finish no earlier than 2020-11-20 17:00 | 高层经理; 项目成员; QA; CM | 32h | 32h |
| 98 | 1.8.8 | 试运行 | 8d | 2021-01-29 16:12 A | 2021-02-10 16:12 A | 97 | 100% | finish no earlier than 2020-11-27 17:00 | 高层经理; 项目成员; QA; CM | 256h | 256h |
| 99 | 1.8.9 | 客户验收 | 2d | 2021-02-18 08:00 A | 2021-02-19 17:00 A | 98 | 100% | start no earlier than 2021-02-18 08:00 | 高层经理; 项目成员; QA; CM; 客户 | 80h | 80h |
| 100 | 1.9 | **项目关闭** | 5d | 2021-02-22 08:00 A | 2021-02-26 17:00 A |  | 100% |  |  | 72h | 72h |
| 101 | 1.9.1 | 项目总结 | 1d | 2021-02-22 08:00 A | 2021-02-22 17:00 A | 99 | 100% | start no earlier than 2019-11-27 08:00 | 项目成员; PM | 16h | 16h |
| 102 | 1.9.2 | 将项目数据提交到组织级数据库中 | 1d | 2021-02-23 08:00 A | 2021-02-24 11:12 A | 101 | 100% | start no earlier than 2019-11-27 08:00 | QA | 8h | 8h |
| 103 | 1.9.3 | 关闭项目配置录 | 1d | 2021-02-24 11:12 A | 2021-02-25 11:12 A | 102 | 100% | start no earlier than 2019-11-28 08:00 | CM | 8h | 8h |
| 104 | 1.9.4 | 总结会议 | 1d | 2021-02-26 08:00 A | 2021-02-26 17:00 A | 103 | 100% | finish no earlier than 2021-02-26 17:00 | 高层经理; 项目成员; QA; CM; PM | 40h | 40h |
