Schedule from MS Project, 2021-01-01 to 2021-04-13, A marks actual dates.

## Calendars

- 标准: Mon-Fri 08:00-12:00, 13:00-17:00; Sat-Sun off.

## Resources

| Resource |
| --- |
| liu |
| li |
| zhang |
| zhao |
| sui |
| du |
| PM |
| QA\PM |
| PM\DEV |
| CM |
| PPQA |
| PM\DEV\QA\CM\GM\ |
| PM\DEV\QA\CM\Test\GM |
| market |
| ma需求开发人员 |
| 需求开发人员 |
| 需求开发人员/技术人员 |
| 需求开发人员技术人员 |
| 技术人员 |
| PM\DEV\QA\CM\Test\GM\需求开发人员 |
| 开发人员 |
| 设计人员 |
| 编码人员 |
| 评审人员 |
| 需求人员 |
| Tester |
| QA |
| 项目所有人员 |
| 客户 |
| 客服 |
| 客服\客户 |
| 相关人员 |
| 高层经理 |
| 项目成员 |
| 李亮 |
| 李亮\傅淑娟\邵华 |
| 项目组成员 |
| 配置管理员 |
| 朱炳锋 |
| 邵华 |
| 武凌峰 |
| 张锡锋 |
| z张锡锋 |
| 武陵峰 |
| DEV |
| Test |
| GM |
| 韶华 |
| PM/GM |
| PM/DEV |
| PM/QA |
| PM/DEV/Tester |

## Schedule

| ID | WBS | Task | Type | Duration | Start | Finish | Predecessors | Complete | Remaining | Total slack | Constraint | Resources | Work | Actual work | Text1 |
| --- | --- | --- | --- | --- | --- | --- | --- | --- | --- | --- | --- | --- | --- | --- | --- |
| 1 | 1 | **RAS** |  | 73d | 2021-01-01 08:00 A | 2021-04-13 17:00 |  | 60% | 28.94d | 0d |  |  | 740h | 434.4h |  |
| 2 | 1.1 | **项目启动** |  | 3d | 2021-01-01 08:00 A | 2021-01-05 17:00 A |  | 100% |  |  |  |  | 24h | 24h |  |
| 3 | 1.1.1 | 建立项目 |  | 0.5d | 2021-01-01 08:00 A | 2021-01-01 12:00 A |  | 100% |  |  | start no earlier than 2021-01-01 08:00 | PM/GM | 4h | 4h |  |
| 4 | 1.1.2 | 确认项目利益相关人、项目资源及关键的依赖关系 |  | 0.5d | 2021-01-01 13:00 A | 2021-01-01 17:00 A | 3 | 100% |  |  |  | PM | 4h | 4h |  |
| 5 | 1.1.3 | 对项目进行可行性分析 |  | 0.5d | 2021-01-04 08:00 A | 2021-01-04 12:00 A | 4 | 100% |  |  |  | PM/DEV | 4h | 4h |  |
| 6 | 1.1.4 | 对项目进行初始估算 |  | 0.5d | 2021-01-04 13:00 A | 2021-01-04 17:00 A | 5 | 100% |  |  |  | PM/DEV | 4h | 4h |  |
| 7 | 1.1.5 | 准备项目任务书 |  | 0.5d | 2021-01-05 08:00 A | 2021-01-05 12:00 A | 6 | 100% |  |  |  | PM | 4h | 4h |  |
| 8 | 1.1.6 | 召开项目启动会 |  | 0.5d | 2021-01-05 13:00 A | 2021-01-05 17:00 A | 7 | 100% |  |  |  | PM\DEV\QA\CM\Test\GM\需求开发人员 | 4h | 4h |  |
| 9 | 1.2 | **项目计划** |  | 5.5d | 2021-01-06 08:00 A | 2021-01-13 12:00 A |  | 100% |  |  |  |  | 60h | 60h |  |
| 10 | 1.2.1 | 建立QPPO和过程组建 |  | 0.5d | 2021-01-06 08:00 A | 2021-01-06 12:00 A | 8 | 100% |  |  |  | PM/QA | 4h | 4h |  |
| 11 | 1.2.2 | 进行工作任务结构分解 |  | 0.5d | 2021-01-06 13:00 A | 2021-01-06 17:00 A | 10 | 100% |  |  |  | PM | 4h | 4h |  |
| 12 | 1.2.3 | 进行详细估算 |  | 0.5d | 2021-01-07 08:00 A | 2021-01-07 12:00 A | 11 | 100% |  |  |  | PM/DEV | 4h | 4h |  |
| 13 | 1.2.4 | 建立项目进度计划 |  | 0.5d | 2021-01-07 13:00 A | 2021-01-07 17:00 A | 12 | 100% |  |  |  | PM/DEV | 4h | 4h |  |
| 14 | 1.2.5 | 建立沟通计划 |  | 0.5d | 2021-01-08 08:00 A | 2021-01-08 12:00 A | 13 | 100% |  |  |  | PM | 4h | 4h |  |
| 15 | 1.2.6 | 建立培训计划 |  | 0.5d | 2021-01-08 13:00 A | 2021-01-08 17:00 A | 14 | 100% |  |  |  | PM | 4h | 4h |  |
| 16 | 1.2.7 | 建立资源计划 |  | 0.4d | 2021-01-11 08:00 A | 2021-01-11 11:12 A | 15 | 100% |  |  |  | PM | 3.2h | 3.2h |  |
| 17 | 1.2.8 | 建立移交计划 |  | 0.3d | 2021-01-11 11:12 A | 2021-01-11 14:36 A | 16 | 100% |  |  |  | PM | 2.4h | 2.4h |  |
| 18 | 1.2.9 | 建立项目风险管理计划 |  | 0.3d | 2021-01-11 14:36 A | 2021-01-11 17:00 A | 17 | 100% |  |  |  | PM/DEV | 2.4h | 2.4h |  |
| 19 | 1.2.10 | 建立配置管理计划 |  | 0.5d | 2021-01-12 08:00 A | 2021-01-12 12:00 A | 18 | 100% |  |  |  | CM | 4h | 4h |  |
| 20 | 1.2.11 | 建立质量保证计划 |  | 0.5d | 2021-01-12 13:00 A | 2021-01-12 17:00 A | 19 | 100% |  |  |  | PPQA | 4h | 4h |  |
| 21 | 1.2.12 | 建立度量与分析计划 |  | 0.5d | 2021-01-12 13:00 A | 2021-01-12 17:00 A | 19 | 100% |  |  |  | PM | 4h | 4h |  |
| 22 | 1.2.13 | 项目计划评审 |  | 0.5d | 2021-01-13 08:00 A | 2021-01-13 12:00 A | 21 | 100% |  |  |  | 项目组成员; 高层经理; 配置管理员; PPQA | 16h | 16h | 会议走查 |
| 23 | 1.3 | **需求开发与管理** |  | 9d | 2021-01-13 13:00 A | 2021-01-26 12:00 A |  | 100% |  |  |  |  | 156h | 156h |  |
| 24 | 1.3.1 | 客户调研 |  | 2d | 2021-01-13 13:00 A | 2021-01-15 12:00 A | 22 | 100% |  |  |  | 需求开发人员; 客户 | 32h | 32h |  |
| 25 | 1.3.2 | 与客户进行初步沟通 |  | 1d | 2021-01-15 13:00 A | 2021-01-18 12:00 A | 24 | 100% |  |  |  | 需求开发人员; 客户 | 16h | 16h |  |
| 26 | 1.3.3 | 建立产品原型 |  | 0.5d | 2021-01-18 13:00 A | 2021-01-18 17:00 A | 25 | 100% |  |  |  | 需求开发人员 | 4h | 4h |  |
| 27 | 1.3.4 | 与客户确定产品原型并进一步获取需求 |  | 0.5d | 2021-01-19 08:00 A | 2021-01-19 12:00 A | 26 | 100% |  |  |  | 需求开发人员; 客户 | 8h | 8h |  |
| 28 | 1.3.5 | 编写产品规格需求 |  | 2d | 2021-01-19 13:00 A | 2021-01-21 12:00 A | 27 | 100% |  |  |  | 需求开发人员 | 16h | 16h |  |
| 29 | 1.3.6 | 准备需求同行评审 |  | 0.5d | 2021-01-21 13:00 A | 2021-01-21 17:00 A | 28 | 100% |  |  |  | 需求开发人员 | 4h | 4h |  |
| 30 | 1.3.7 | 需求技术评审 |  | 0.5d | 2021-01-22 08:00 A | 2021-01-22 12:00 A | 29 | 100% |  |  |  | PM; DEV; QA; CM; Test; GM; 需求开发人员 | 28h | 28h | 评审方式：正式的同行评审 |
| 31 | 1.3.8 | 建立需求跟踪矩阵 |  | 0.5d | 2021-01-22 13:00 A | 2021-01-22 17:00 A | 30 | 100% |  |  |  | 需求开发人员 | 4h | 4h |  |
| 32 | 1.3.9 | 产品需求规格说明书基线化 |  | 0.5d | 2021-01-25 08:00 A | 2021-01-25 12:00 A | 31 | 100% |  |  |  | CM | 4h | 4h |  |
| 33 | 1.3.10 | 需求里程碑评审 | milestone | 1d | 2021-01-25 13:00 A | 2021-01-26 12:00 A | 32 | 100% |  |  |  | 高层经理; 项目成员; QA; CM; 客户 | 40h | 40h |  |

| ID | WBS | Task | Type | Duration | Start | Finish | Predecessors | Complete | Remaining | Total slack | Free slack | Constraint | Resources | Work | Actual work | Text1 |
| --- | --- | --- | --- | --- | --- | --- | --- | --- | --- | --- | --- | --- | --- | --- | --- | --- |
| 34 | 1.4 | **分析与设计** |  | 5.5d | 2021-01-26 13:00 A | 2021-02-02 17:00 A |  | 100% |  |  |  |  |  | 58.4h | 58.4h |  |
| 35 | 1.4.1 | 开发选择设计方案 |  | 2d | 2021-01-26 13:00 A | 2021-01-28 12:00 A | 33 | 100% |  |  |  |  | PM/DEV | 16h | 16h |  |
| 36 | 1.4.2 | 系统设计 |  | 1.5d | 2021-01-28 13:00 A | 2021-01-29 17:00 A | 35 | 100% |  |  |  |  | DEV | 12h | 12h |  |
| 37 | 1.4.3 | 准备设计同行评审 |  | 0.2d | 2021-02-01 08:00 A | 2021-02-01 09:36 A | 36 | 100% |  |  |  |  |  |  |  |  |
| 38 | 1.4.4 | 设计评审 |  | 0.5d | 2021-02-01 09:36 A | 2021-02-01 14:36 A | 37 | 100% |  |  |  |  | DEV | 4h | 4h | 评审方式：正式的同行评审 |
| 39 | 1.4.5 | 设计基线化 |  | 0.3d | 2021-02-01 14:36 A | 2021-02-01 17:00 A | 38 | 100% |  |  |  |  | CM | 2.4h | 2.4h |  |
| 40 | 1.4.6 | 建立设计到需求的跟踪矩阵 |  | 0.5d | 2021-02-02 08:00 A | 2021-02-02 12:00 A | 39 | 100% |  |  |  |  | DEV | 4h | 4h |  |
| 41 | 1.4.7 | 设计里程碑评审 | milestone | 0.5d | 2021-02-02 13:00 A | 2021-02-02 17:00 A | 40 | 100% |  |  |  |  | 高层经理; 项目成员; QA; CM; 客户 | 20h | 20h |  |
| 42 | 1.5 | **编码** |  | 29.5d | 2021-02-03 08:00 A | 2021-03-16 12:00 |  | 69% | 9.03d | 0.6d |  |  |  | 196h | 136h |  |
| 43 | 1.5.1 | 确定编码规范 |  | 0.5d | 2021-02-03 08:00 A | 2021-02-03 12:00 A | 41 | 100% |  |  |  |  | PM | 4h | 4h |  |
| 44 | 1.5.2 | 准备代码同行评审检查单 |  | 0.5d | 2021-02-03 13:00 A | 2021-02-03 17:00 A | 43 | 100% |  |  |  |  | PM | 4h | 4h |  |
| 45 | 1.5.3 | **授权发起** |  | 5d | 2021-02-04 08:00 A | 2021-02-10 17:00 A |  | 100% |  |  |  |  |  | 40h | 40h |  |
| 46 | 1.5.3.1 | 编程 |  | 3d | 2021-02-04 08:00 A | 2021-02-08 17:00 A | 44 | 100% |  |  |  |  | DEV | 24h | 24h |  |
| 47 | 1.5.3.2 | 进行代码走查 |  | 1d | 2021-02-09 08:00 A | 2021-02-09 17:00 A | 46 | 100% |  |  |  |  | DEV | 8h | 8h | 走查 |
| 48 | 1.5.3.3 | 进行模块测试 |  | 1d | 2021-02-10 08:00 A | 2021-02-10 17:00 A | 47 | 100% |  |  |  |  | DEV | 8h | 8h |  |
| 49 | 1.5.4 | **授权审核** |  | 6d | 2021-02-18 08:00 A | 2021-02-25 17:00 A |  | 100% |  |  |  |  |  | 48h | 48h |  |
| 50 | 1.5.4.1 | 编程 |  | 4d | 2021-02-18 08:00 A | 2021-02-23 17:00 A |  | 100% |  |  |  | start no earlier than 2021-02-18 08:00 | DEV | 32h | 32h |  |
| 51 | 1.5.4.2 | 进行代码走查 |  | 1d | 2021-02-24 08:00 A | 2021-02-24 17:00 A | 50 | 100% |  |  |  |  | DEV | 8h | 8h | 走查 |
| 52 | 1.5.4.3 | 进行模块测试 |  | 1d | 2021-02-25 08:00 A | 2021-02-25 17:00 A | 51 | 100% |  |  |  |  | DEV | 8h | 8h |  |
| 53 | 1.5.5 | **授权管理** |  | 5d | 2021-02-26 08:00 A | 2021-03-04 17:00 A |  | 100% |  |  |  |  |  | 40h | 40h |  |
| 54 | 1.5.5.1 | 编程 |  | 3d | 2021-02-26 08:00 A | 2021-03-02 17:00 A | 52 | 100% |  |  |  |  | DEV | 24h | 24h |  |
| 55 | 1.5.5.2 | 进行代码走查 |  | 1d | 2021-03-03 08:00 A | 2021-03-03 17:00 A | 54 | 100% |  |  |  |  | DEV | 8h | 8h | 走查 |
| 56 | 1.5.5.3 | 进行模块测试 |  | 1d | 2021-03-04 08:00 A | 2021-03-04 17:00 A | 55 | 100% |  |  |  |  | DEV | 8h | 8h |  |
| 57 | 1.5.6 | **操作日志** |  | 5d | 2021-03-05 08:00 | 2021-03-11 17:00 |  |  |  | 0.6d |  |  |  | 40h |  |  |
| 58 | 1.5.6.1 | 编程 |  | 3d | 2021-03-05 08:00 | 2021-03-09 17:00 | 56 |  |  | 0.6d | 0d |  | DEV | 24h |  |  |
| 59 | 1.5.6.2 | 进行代码走查 |  | 1d | 2021-03-10 08:00 | 2021-03-10 17:00 | 58 |  |  | 0.6d | 0d |  | DEV | 8h |  | 走查 |
| 60 | 1.5.6.3 | 进行模块测试 |  | 1d | 2021-03-11 08:00 | 2021-03-11 17:00 | 59 |  |  | 0.6d | 0d |  | DEV | 8h |  |  |
| 61 | 1.5.7 | 编写用户操作手册 |  | 1.5d | 2021-03-12 08:00 | 2021-03-15 12:00 | 60 |  |  | 0.6d | 0d |  | DEV | 12h |  |  |
| 62 | 1.5.8 | 评审用户手册 |  | 1d | 2021-03-15 13:00 | 2021-03-16 12:00 | 61 |  |  | 0.6d | 0d |  | PM/DEV/Tester | 8h |  |  |

| ID | WBS | Task | Duration | Start | Finish | Predecessors | Total slack | Free slack | Constraint | Resources | Work |
| --- | --- | --- | --- | --- | --- | --- | --- | --- | --- | --- | --- |
| 63 | 1.6 | **产品集成** | 6d | 2021-03-16 13:00 | 2021-03-24 12:00 |  | 0.6d |  |  |  | 48h |
| 64 | 1.6.1 | 确定将被集成的组件与接口 | 0.5d | 2021-03-16 13:00 | 2021-03-16 17:00 | 62 | 0.6d | 0d |  | DEV | 4h |
| 65 | 1.6.2 | 确定集成顺序 | 0.5d | 2021-03-17 08:00 | 2021-03-17 12:00 | 64 | 0.6d | 0d |  | DEV | 4h |
| 66 | 1.6.3 | 确定集成环境的需求 | 0.5d | 2021-03-17 13:00 | 2021-03-17 17:00 | 65 | 0.6d | 0d |  | DEV | 4h |
| 67 | 1.6.4 | 建立和维护集成规程 | 0.5d | 2021-03-18 08:00 | 2021-03-18 12:00 | 66 | 0.6d | 0d |  | DEV | 4h |
| 68 | 1.6.5 | 确保集成环境准备好 | 0.5d | 2021-03-18 13:00 | 2021-03-18 17:00 | 67 | 0.6d | 0d |  | DEV | 4h |
| 69 | 1.6.6 | 确保组件准备好集成 | 0.5d | 2021-03-19 08:00 | 2021-03-19 12:00 | 68 | 0.6d | 0d |  | DEV | 4h |
| 70 | 1.6.7 | 执行组件的集成 | 1d | 2021-03-19 13:00 | 2021-03-22 12:00 | 69 | 0.6d | 0d |  | DEV | 8h |
| 71 | 1.6.8 | 集成编译并解决集成中的问题/缺陷 | 1.5d | 2021-03-22 13:00 | 2021-03-23 17:00 | 70 | 0.6d | 0d |  | DEV | 12h |
| 72 | 1.6.9 | 提交系统测试 | 0.5d | 2021-03-24 08:00 | 2021-03-24 12:00 | 71 | 0.6d | 0d |  | DEV | 4h |
| 73 | 1.7 | **系统测试** | 7.5d | 2021-03-24 13:00 | 2021-04-02 17:00 |  | 0.6d |  |  |  | 84h |
| 74 | 1.7.1 | 准备测试计划、测试用例 | 2d | 2021-03-24 13:00 | 2021-03-26 12:00 | 72 | 0.6d | 0d | finish no earlier than 2014-03-25 17:00 | Tester | 16h |
| 75 | 1.7.2 | 组织评审 | 0.5d | 2021-03-26 13:00 | 2021-03-26 17:00 | 74 | 0.6d | 0d |  | Tester | 4h |
| 76 | 1.7.3 | 建立测试用例到需求的跟踪矩阵 | 0.5d | 2021-03-29 08:00 | 2021-03-29 12:00 | 75 | 0.6d | 0d |  | Tester | 4h |
| 77 | 1.7.4 | 执行测试并记录BUG | 2d | 2021-03-29 13:00 | 2021-03-31 12:00 | 76 | 0.6d | 0d |  | Tester | 16h |
| 78 | 1.7.5 | BUG管理流程 | 1d | 2021-03-31 13:00 | 2021-04-01 12:00 | 77 | 0.6d | 0d |  | Tester | 8h |
| 79 | 1.7.6 | 测试总结 | 0.5d | 2021-04-01 13:00 | 2021-04-01 17:00 | 78 | 0.6d | 0d |  | Tester | 4h |
| 80 | 1.7.7 | 测试结果评审 | 0.5d | 2021-04-02 08:00 | 2021-04-02 12:00 | 79 | 0.6d | 0d |  | 高层经理; 项目成员; QA; CM | 16h |
| 81 | 1.7.8 | 测试里程碑评审 | 0.5d | 2021-04-02 13:00 | 2021-04-02 17:00 | 80 | 0.6d | 0d |  | 高层经理; 项目成员; QA; CM | 16h |
| 82 | 1.8 | **产品发布** | 4.5d | 2021-04-05 08:00 | 2021-04-09 12:00 |  | 0.6d |  |  |  | 96h |
| 83 | 1.8.1 | 确定发布内容 | 0.3d | 2021-04-05 08:00 | 2021-04-05 10:24 | 81 | 0.6d | 0d |  | PM | 2.4h |
| 84 | 1.8.2 | 建立产品发布基线 | 0.3d | 2021-04-05 10:24 | 2021-04-05 13:48 | 83 | 0.6d | 0d |  | CM | 2.4h |
| 85 | 1.8.3 | 进行发布审计 | 0.4d | 2021-04-05 13:48 | 2021-04-05 17:00 | 84 | 0.6d | 0d |  | QA | 3.2h |
| 86 | 1.8.4 | 发布评审 | 0.5d | 2021-04-06 08:00 | 2021-04-06 12:00 | 85 | 0.6d | 0d |  | 评审人员 | 4h |
| 87 | 1.8.5 | 制作软件安装包 | 0.5d | 2021-04-06 13:00 | 2021-04-06 17:00 | 86 | 0.6d | 0d |  | PM | 4h |
| 88 | 1.8.6 | 进行安装包的投产测试 | 0.5d | 2021-04-07 08:00 | 2021-04-07 12:00 | 87 | 0.6d | 0d |  | PM | 4h |
| 89 | 1.8.7 | 进行发布 | 0.5d | 2021-04-07 13:00 | 2021-04-07 17:00 | 88 | 0.6d | 0d |  | 高层经理; 项目成员; QA; CM | 16h |
| 90 | 1.8.8 | 客户验收 | 1.5d | 2021-04-08 08:00 | 2021-04-09 12:00 | 89 | 0.6d | 0d |  | 高层经理; 项目成员; QA; CM; 客户 | 60h |

| ID | WBS | Task | Duration | Start | Finish | Predecessors | Total slack | Free slack | Constraint | Resources | Work |
| --- | --- | --- | --- | --- | --- | --- | --- | --- | --- | --- | --- |
| 91 | 1.9 | **项目关闭** | 2.5d | 2021-04-09 13:00 | 2021-04-13 17:00 |  | 0d |  |  |  | 17.6h |
| 92 | 1.9.1 | 项目总结 | 0.3d | 2021-04-09 13:00 | 2021-04-09 15:24 | 90 | 0.6d | 0d |  | 项目成员; PM | 4.8h |
| 93 | 1.9.2 | 将项目数据提交到组织级数据库中 | 0.2d | 2021-04-09 15:24 | 2021-04-12 11:12 | 92 | 0.6d |  |  | QA | 1.6h |
| 94 | 1.9.3 | 关闭项目配置录 | 0.4d | 2021-04-13 08:00 | 2021-04-13 17:00 | 93 | 0d |  | start no earlier than 2021-04-13 08:00 | CM | 3.2h |
| 95 | 1.9.4 | 总结会议 | 0.2d | 2021-04-13 08:00 | 2021-04-13 09:36 | 94 | 0.8d |  | start no earlier than 2021-04-13 08:00 | 高层经理; 项目成员; QA; CM; PM | 8h |
