Schedule from MS Project, 2020-07-03 to 2021-03-11, A marks actual dates.

## Calendars

- 标准: Mon-Fri 08:00-12:00, 13:00-17:00; Sat-Sun off.

## Resources

| Resource |
| --- |
| 咨询师 |
| EPG/咨询师 |
| EPGL/咨询师 |
| EPG |
| EPGL |
| EPG/QA/试点项目 |
| 咨询师/ATM |
| EPG/咨询师/试点项目 |
| 咨询师/主任评估师/EPG/试点项目 |

## Schedule

| ID | WBS | Task | Type | Duration | Start | Finish | Predecessors | Complete | Remaining | Resources | Work | Actual work |
| --- | --- | --- | --- | --- | --- | --- | --- | --- | --- | --- | --- | --- |
| 1 | 1 | **CMMI咨询项目** |  | 180d | 2020-07-03 A | 2021-03-11 |  | 98% | 3.27d |  | 2264h | 2224h |
| 2 | 1.1 | **启动会与过程域培训** |  | 16d | 2020-07-03 A | 2020-07-24 A |  | 100% |  |  | 128h | 128h |
| 3 | 1.1.1 | 启动会与差距分析 | manual | 2d | 2020-07-03 A | 2020-07-06 A |  | 100% |  | 咨询师 | 16h | 16h |
| 4 | 1.1.2 | 制定过程改进总体计划 | manual | 1d | 2020-07-07 A | 2020-07-07 A | 3 | 100% |  | EPG/咨询师 | 8h | 8h |
| 5 | 1.1.3 | 组建EPG小组 | manual | 1d | 2020-07-08 A | 2020-07-08 A | 4 | 100% |  | EPGL/咨询师 | 8h | 8h |
| 6 | 1.1.4 | 制定EPG章程 | manual | 1d | 2020-07-09 A | 2020-07-09 A | 5 | 100% |  | EPGL/咨询师 | 8h | 8h |
| 7 | 1.1.5 | 过程域培训 | manual | 3d | 2020-07-10 A | 2020-07-14 A | 6 | 100% |  | 咨询师 | 24h | 24h |
| 8 | 1.1.6 | 熟悉过程域内容 | manual | 8d | 2020-07-15 A | 2020-07-24 A | 7 | 100% |  | EPG | 64h | 64h |
| 9 | 1.2 | **体系文档建立** |  | 35d | 2020-07-27 A | 2020-09-11 A |  | 100% |  |  | 280h | 280h |
| 10 | 1.2.1 | 制定体系文档草稿 | manual | 8d | 2020-07-27 A | 2020-08-05 A | 8 | 100% |  | EPG | 64h | 64h |
| 11 | 1.2.2 | 咨询师参与评审体系文档(第一次) | manual | 4d | 2020-08-06 A | 2020-08-11 A | 10 | 100% |  | EPG/咨询师 | 32h | 32h |
| 12 | 1.2.3 | 修改体系文档 | manual | 5d | 2020-08-12 A | 2020-08-18 A | 11 | 100% |  | EPG | 40h | 40h |
| 13 | 1.2.4 | 内部评审体系文档(第二次) | manual | 3d | 2020-08-19 A | 2020-08-21 A | 12 | 100% |  | EPG | 24h | 24h |
| 14 | 1.2.5 | 修改体系文档 | manual | 3d | 2020-08-24 A | 2020-08-26 A | 13 | 100% |  | EPG | 24h | 24h |
| 15 | 1.2.6 | 咨询师参与评审体系文档(第三次) | manual | 2d | 2020-08-27 A | 2020-08-28 A | 14 | 100% |  | EPG/咨询师 | 16h | 16h |
| 16 | 1.2.7 | 发布流程体系 | manual | 1d | 2020-08-31 A | 2020-08-31 A | 15 | 100% |  | EPG | 8h | 8h |
| 17 | 1.2.8 | 制作内部培训材料 | manual | 6d | 2020-09-01 A | 2020-09-08 A | 16 | 100% |  | EPG | 48h | 48h |
| 18 | 1.2.9 | 公司内部全员培训并考试 | manual | 3d | 2020-09-09 A | 2020-09-11 A | 17 | 100% |  | EPG | 24h | 24h |
| 19 | 1.3 | **试运行及实施指导** |  | 100d | 2020-09-14 A | 2021-01-29 A |  | 100% |  |  | 1576h | 1576h |
| 20 | 1.3.1 | 选取试点项目 | manual | 2d | 2020-09-14 A | 2020-09-15 A | 18 | 100% |  | EPG/咨询师 | 16h | 16h |
| 21 | 1.3.2 | 为试点项目指派QA | manual | 1d | 2020-09-16 A | 2020-09-16 A | 20 | 100% |  | EPGL | 8h | 8h |
| 22 | 1.3.3 | EPG、QA指导试点项目运行 | manual | 97d | 2020-09-17 A | 2021-01-29 A | 21 | 100% |  | EPG/QA/试点项目 | 776h | 776h |
| 23 | 1.3.4 | 实施过程改进 | manual | 97d | 2020-09-17 A | 2021-01-29 A | 21 | 100% |  | EPG/QA/试点项目 | 776h | 776h |
| 24 | 1.4 | **预评估** |  | 14d | 2021-02-01 A | 2021-02-18 A |  | 100% |  |  | 80h | 80h |
| 25 | 1.4.1 | **预评估准备** |  | 4d | 2021-02-01 A | 2021-02-04 A |  | 100% |  |  | 32h | 32h |
| 26 | 1.4.1.1 | 制定预评估计划 | manual | 2d | 2021-02-01 A | 2021-02-02 A | 22 | 100% |  | 咨询师 | 16h | 16h |
| 27 | 1.4.1.2 | 培训PIIDS表 | manual | 2d | 2021-02-03 A | 2021-02-04 A | 26 | 100% |  | 咨询师 | 16h | 16h |

| ID | WBS | Task | Type | Duration | Start | Finish | Predecessors | Complete | Resources | Work | Actual work |
| --- | --- | --- | --- | --- | --- | --- | --- | --- | --- | --- | --- |
| 28 | 1.4.2 | **进行预评估** |  | 10d | 2021-02-05 A | 2021-02-18 A |  | 100% |  | 48h | 48h |
| 29 | 1.4.2.1 | 培训ATM成员评估方法 | manual | 3d | 2021-02-05 A | 2021-02-09 A | 27 | 100% | 咨询师/ATM | 24h | 24h |
| 30 | 1.4.2.2 | 预评估启动会 | manual | 1d | 2021-02-10 A | 2021-02-10 A | 29 | 100% | EPG/咨询师/试点项目 | 8h | 8h |
| 31 | 1.4.2.3 | 预评估访谈与审计文档 | manual | 1d | 2021-02-10 A | 2021-02-10 A | 30 | 100% | EPG/咨询师/试点项目 | 8h | 8h |
| 32 | 1.4.2.4 | 预评估报告 | manual | 1d | 2021-02-18 A | 2021-02-18 A | 31 | 100% | EPG/咨询师/试点项目 | 8h | 8h |
| 33 | 1.5 | **正式评估准备** |  | 8d | 2021-02-17 A | 2021-02-26 A |  | 100% | EPG | 128h | 128h |
| 34 | 1.5.1 | 针对预评估问题进行整改 | manual | 6d | 2021-02-18 A | 2021-02-25 A | 32 | 100% | EPG/咨询师/试点项目 | 48h | 48h |
| 35 | 1.5.2 | 制作PIIDS表及准备评估访谈 | manual | 2d | 2021-02-25 A | 2021-02-26 A | 34 | 100% | EPG | 16h | 16h |
| 36 | 1.6 | **就绪检查** |  | 4d | 2021-03-01 A | 2021-03-04 A |  | 100% |  | 32h | 32h |
| 37 | 1.6.1 | 检查PIIDS表准备情况 | manual | 1d | 2021-03-01 A | 2021-03-01 A | 35 | 100% | 咨询师 | 8h | 8h |
| 38 | 1.6.2 | 培训正式评估注意事项 | manual | 1d | 2021-03-02 A | 2021-03-02 A | 37 | 100% | 咨询师 | 8h | 8h |
| 39 | 1.6.3 | 针对问题进行整改 | manual | 2d | 2021-03-03 A | 2021-03-04 A | 38 | 100% | EPG/咨询师/试点项目 | 16h | 16h |
| 40 | 1.7 | **正式评估** |  | 5d | 2021-03-05 | 2021-03-11 |  |  |  | 40h |  |
| 41 | 1.7.1 | 正式评估 | manual | 5d | 2021-03-05 | 2021-03-11 | 39 |  | 咨询师/主任评估师/EPG/试点项目 | 40h |  |
